Schedule from MS Project, 2012-02-03 to 2012-05-31, A marks actual dates.

## Calendars

- Standard: Mon-Fri 08:00-12:00, 13:00-17:00; Sat-Sun off.

## Resources

| Resource |
| --- |
| Ed |
| Wyatt |

## Schedule

| ID | Task | Duration | Start | Finish | Predecessors | Complete | Remaining | Total slack | Free slack | Resources | Work | Actual work |
| --- | --- | --- | --- | --- | --- | --- | --- | --- | --- | --- | --- | --- |
| 1 | CAD Allen's Drive Base | 5d | 2012-02-03 | 2012-02-09 |  |  |  | 52d | 2d | Ed | 40h |  |
| 2 | CAD/find models of all components | 1d | 2012-02-10 | 2012-02-10 |  |  |  | 51d | 1d | Ed | 8h |  |
| 3 | Figure out component mounting and weight distribution | 5d | 2012-02-14 | 2012-02-20 | 2, 1, 8 |  |  | 50d | 0d | Ed | 40h |  |
| 4 | Order computer | 5d | 2012-02-03 | 2012-02-09 |  |  |  | 55d | 0d |  |  |  |
| 5 | Order inverter and related cabling | 5d | 2012-02-03 A | 2012-02-09 |  | 14% | 4.3d | 53d | 13d |  |  |  |
| 6 | Get Kinect (Do we have one?) | 7d | 2012-02-03 | 2012-02-13 |  |  |  | 61d | 11d |  |  |  |
| 7 | Fabricate all mechanical parts (frame rails, mounting brackets) | 5d | 2012-02-21 | 2012-02-27 | 3 |  |  | 50d | 0d |  |  |  |
| 8 | Finalize sensor package | 1d | 2012-02-13 | 2012-02-13 |  |  |  | 50d | 0d | Ed | 8h |  |
| 9 | Rebuild Alan's Frame | 1d | 2012-02-28 | 2012-02-28 | 7, 22 |  |  | 50d | 0d | Ed | 8h |  |
| 10 | Rewire Allen | 5d | 2012-03-01 | 2012-03-07 | 9, 6, 5 |  |  | 50d | 0d | Ed | 40h |  |
| 11 | Set Up Alan's new computer | 1d | 2012-02-29 | 2012-02-29 | 32 |  |  | 55d | 5d | Ed | 8h |  |
| 12 | Run rebuilt Alan's Mobile Base/Localization | 3d | 2012-03-12 | 2012-03-14 | 11, 13 |  |  | 50d | 49d | Ed | 24h |  |
| 13 | Calibrate Allen's systems | 2d | 2012-03-08 | 2012-03-09 | 11, 10 |  |  | 50d | 0d | Ed | 16h |  |
| 14 | Create ROS Position Control Package for IRB-120 | 10d | 2012-05-09 | 2012-05-22 | 15, 16 |  |  | 1d | 0d | Ed | 80h |  |
| 15 | Set up IRB-120 to respond to control from network | 10d | 2012-04-25 | 2012-05-08 | 20, 19 |  |  | 1d | 0d | Ed | 80h |  |
| 16 | Create ROS representation of IRB-120 (Joint/Link model, tied to 3D model for visualization) | 2d | 2012-02-23 | 2012-02-24 | 24 |  |  | 46d | 0d | Ed | 16h |  |
| 17 | Create ROS representation of full robot, incorporating existing drive base model and IRB-120 model | 5d | 2012-03-15 | 2012-03-21 | 16, 3 |  |  | 46d | 45d | Ed | 40h |  |
| 18 | Demonstrate working playback of robot model from recorded data | 5d | 2012-05-24 | 2012-05-30 | 17, 30 |  |  | 1d |  | Ed | 40h |  |
| 19 | Figure out what the deal is with HS network comms to IRC5 | 1d | 2012-02-03 | 2012-02-03 |  |  |  | 58d | 0d |  |  |  |
| 20 | Test IRB-120 with ABB software (prove it moves, run a small RAPID program) | 1d | 2012-04-24 | 2012-04-24 | 23 |  |  | 0d |  | Ed | 8h |  |
| 21 | Test IRB-120 with ABB software running from inverter power (prove it moves, run a small RAPID program) | 1d | 2012-05-31 | 2012-05-31 | 20, 5 |  |  | 0d |  | Ed | 8h |  |
| 22 | Disassemble Alan | 1d | 2012-02-22 | 2012-02-22 | 3 |  |  | 53d | 3d | Ed | 8h |  |
| 23 | Test IRB-120 Jogging Ability | 1d | 2012-04-23 A | 2012-04-23 A |  | 100% |  |  |  | Ed | 8h | 8h |
| 24 | Set Up Laptop for ROS Dev | 1d | 2012-02-21 | 2012-02-21 |  |  |  | 46d | 0d | Ed | 8h |  |
| 25 | Test ROS Setup by Bringing Jinx Online and Driving | 1d | 2012-03-22 | 2012-03-22 | 24 |  |  | 46d | 0d | Ed | 8h |  |
| 26 | Test Alan by Bringing Online and Driving | 2d | 2012-03-23 | 2012-03-26 | 25 |  |  | 46d | 0d | Ed | 16h |  |
| 27 | Test Alan LIDAR Localization | 1d | 2012-03-27 | 2012-03-27 | 26 |  |  | 46d | 0d | Ed | 8h |  |
| 28 | Find Out About Alan's HDD Contents from Tony | 7d | 2012-02-03 | 2012-02-13 |  |  |  | 77d | 31d |  |  |  |
| 29 | Set up Solidworks Workstation (Alan PC) | 1d | 2012-03-28 | 2012-03-28 | 28, 27 |  |  | 46d |  | Ed | 8h |  |
| 30 | Test Fully Assembled Robot under Teleop Control | 1d | 2012-05-23 | 2012-05-23 | 12, 14 |  |  | 1d | 0d | Ed | 8h |  |
| 31 | Have Wyatt Contact ABB About HS Network Comms (?) | 10d | 2012-02-06 | 2012-02-17 | 19 |  |  | 74d |  |  |  |  |
| 32 | Assemble Alan's Computer | 1d | 2012-02-27 | 2012-02-27 | 4 |  |  | 55d | 0d | Ed | 8h |  |
